How a schedule from MS Project changed from version to version. A marks actual dates.

## Version 1 (data date 2024-05-13, saved 2024-06-16)

Note of the change: Создание ветки и выгрузка файла Project содержащего всё расписание плана работ по ПО

| ID | WBS | Task | Duration | Start | Finish | Predecessors | Complete | Total float | Constraint |
| --- | --- | --- | --- | --- | --- | --- | --- | --- | --- |
| 1 | 1 | **Этап 0. Подготовка проекта** | 15d | 2024-01-25 A | 2024-02-14 A |  | 100% |  |  |
| 2 |  | Анализ предметной области | 2d | 2024-01-25 A | 2024-01-30 A |  | 100% |  |  |
| 3 |  | Определение целей и задач проекта, разработка ТЗ | 4d | 2024-01-31 A | 2024-02-06 A | 2 | 100% |  |  |
| 4 |  | Разработка концепции программного продукта | 2d | 2024-02-07 A | 2024-02-09 A | 3 | 100% |  |  |
| 5 |  | Утверждение ТЗ | 3d | 2024-02-10 A | 2024-02-14 A | 4 | 100% |  |  |
| 6 | 2 | **Этап 1. Сбор требований** | 12d | 2024-02-15 A | 2024-03-01 A | 1 | 100% |  |  |
| 7 |  | Анализ требований и потребностей пользователей | 5d | 2024-02-15 A | 2024-02-21 A | 5 | 100% |  |  |
| 8 |  | Исследование конкурентов и анализ рынка | 1d | 2024-02-29 A | 2024-03-01 A | 7 | 100% |  | finish no earlier than 2024-03-01 |
| 9 | 3 | **Этап 2. Архитектура и дизайн** | 10d | 2024-03-15 A | 2024-03-28 A | 6 | 100% |  |  |
| 10 |  | Проектирование модулей | 4d | 2024-03-15 A | 2024-03-20 A | 8 | 100% |  |  |
| 11 |  | Создание диаграммы классов приложения | 1d | 2024-03-21 A | 2024-03-22 A | 10 | 100% |  |  |
| 12 |  | Создание схем работы классов приложения | 1d | 2024-03-24 A | 2024-03-25 A | 11 | 100% |  |  |
| 13 |  | Разработка структуры базы данных программы | 0d | 2024-03-28 A | 2024-03-28 A | 12 | 100% |  |  |
| 14 | 4 | **Этап 3. Разработка** | 43d | 2024-03-31 A | 2024-05-29 | 9 | 84% | 0d |  |
| 15 |  | Разработка интерфейса | 7d | 2024-03-31 A | 2024-04-09 A | 13 | 100% |  |  |
| 16 |  | Разработка модулей | 12d | 2024-04-12 A | 2024-05-02 A | 15 | 100% |  |  |
| 17 |  | Создание базы данных прложения | 13d | 2024-05-03 A | 2024-05-21 A | 16 | 100% |  |  |
| 18 |  | Создание документации ИС | 6d | 2024-05-22 | 2024-05-29 | 17 |  | 0d |  |
| 19 | 5 | **Этап 4. Тестирование** | 15d | 2024-05-30 | 2024-06-19 | 14 |  | 0d |  |
| 20 |  | Отладка программы | 5d | 2024-05-30 | 2024-06-05 | 18 |  | 0d |  |
| 21 |  | Тестирование и исправление ошибок | 10d | 2024-06-06 | 2024-06-19 | 20 |  | 0d |  |
| 22 | 6 | **Этап 5. Внедрение** | 22d | 2024-06-20 | 2024-07-19 | 19 |  | 0d |  |
| 23 |  | Создание плана внедрения, определение ключевых этапов | 22d | 2024-06-20 | 2024-07-19 | 21 |  | 0d |  |
| 24 |  | Обучение пользователей и технической поддержки | 15d | 2024-06-20 | 2024-07-10 | 18 |  | 7d |  |
| 25 | 7 | **Этап 6. Поддержка** | 90d | 2024-07-22 | 2024-11-22 | 22 |  | 0d |  |
| 26 |  | Осуществление поддержи ИС | 60d | 2024-07-22 | 2024-11-22 | 23 |  | 0d |  |

## Version 2 (data date 2024-05-13, saved 2024-06-22)

Note of the change: Изменил информацию в планировке

Last finish 2024-11-22 → 2024-12-13 (+21d).

Changed:

| ID | Task | Start | Finish | Duration | Total float | Predecessors | Other |
| --- | --- | --- | --- | --- | --- | --- | --- |
| 3 | Составление моделей работы программного продукта |  |  |  |  |  | was named Определение целей и задач проекта, разработка ТЗ |
| 4 | Разработка ТЗ |  |  |  |  |  | was named Разработка концепции программного продукта |
| 8 | Анализ рынка, выявление обязательных функций программы |  |  |  |  |  | was named Исследование конкурентов и анализ рынка |
| 15 | Разработка модулей | 2024-04-12 A → 2024-03-31 A (-12d) | 2024-05-02 A → 2024-04-09 A (-23d) | 12d → 7d |  | 16 → 13 | resources Клавиатура [2 штука]; Компьютер [2 штука]; Компьютерная мышь [2 штука]; Фронтенд разработчик; Бэкенд разработчик; Сервер [1 штука]; Постоянные расходы [0.1%]; Монитор [2 штука] → Клавиатура [1 штука]; Компьютер [1 штука]; Компьютерная мышь [1 штука]; Фронтенд разработчик; Сервер [1 штука]; Хранилище данных [1 штука]; Постоянные расходы [0.1%]; Монитор [1 штука] |
| 16 | Разработка интерфейса | 2024-03-31 A → 2024-04-12 A (+12d) | 2024-04-09 A → 2024-05-02 A (+23d) | 7d → 12d |  | 13 → 15 | resources Клавиатура [1 штука]; Компьютер [1 штука]; Компьютерная мышь [1 штука]; Фронтенд разработчик; Сервер [1 штука]; Хранилище данных [1 штука]; Постоянные расходы [0.1%]; Монитор [1 штука] → Клавиатура [2 штука]; Компьютер [2 штука]; Компьютерная мышь [2 штука]; Фронтенд разработчик; Бэкенд разработчик; Сервер [1 штука]; Постоянные расходы [0.1%]; Монитор [2 штука] |
| 17 | Создание базы данных прложения |  |  |  |  | 15 → 16 |  |
| 18 | Создание документации по работе базы данных |  |  |  |  |  | was named Создание документации ИС |
| 20 | Тестирование программы и её отладка |  |  |  |  |  | was named Отладка программы |
| 21 | Исправление выявленных ошибок |  |  |  |  |  | was named Тестирование и исправление ошибок |
| 22 | **Этап 5. Внедрение** |  | 2024-07-19 → 2024-08-09 (+21d) | 22d → 37d |  |  |  |
| 24 | Внедрение и обучение пользователей | 2024-06-20 → 2024-07-22 (+32d) | 2024-07-10 → 2024-08-09 (+30d) |  | 7d → 0d | 18 → 23, 18 | was named Обучение пользователей и технической поддержки |
| 25 | **Этап 6. Поддержка** | 2024-07-22 → 2024-08-12 (+21d) | 2024-11-22 → 2024-12-13 (+21d) |  |  |  |  |
| 26 | Осуществление поддержи | 2024-07-22 → 2024-08-12 (+21d) | 2024-11-22 → 2024-12-13 (+21d) |  |  |  | was named Осуществление поддержи ИС |
